# Case Study - Parking Lot Construction

Schedule from MS Project, 2024-08-01 to 2024-12-20, costs in $.

## Calendars

- Working Calendar: Mon-Fri 08:00-12:00, 13:00-17:00; Sat-Sun off. Exceptions (off unless hours are given): 2024-08-05 (Civic Holiday), 2024-08-05 to 2025-01-24 (Alternate Friday, recurring), 2024-09-02 to 2024-09-03 (Labour Day), 2024-09-30 (National Day for Truth and Reconciliation), 2024-10-14 (Thanksgiving Day), 2024-11-11 (Rememberance Day).

## Resources

| Resource | Rate |
| --- | --- |
| Project Manager | 46.15 |
| Civil Engineer | 41 |
| Electrical Engineer | 42 |
| Construction Workers | 25 |
| Electrician | 32 |
| IT Specialist | 36 |
| Quality Control Inspector | 28 |
| Asphalt | 150 |
| Concrete | 28.5 |
| Electric Car Chargers | 5666 |
| Automatic Check-in/Check-out System | 35000 |
| CCTV Cameras | 200 |
| Signage and Markings | 30 |
| Drainage Materials | 1500 |
| Heavy Machinery | 5000 |
| Safety Equipments | 200 |
| Safety Signs | 30 |

## Schedule

| ID | WBS | Task | Duration | Start | Finish | Predecessors | Total slack | Free slack | Deadline | Resources | Work | Cost |
| --- | --- | --- | --- | --- | --- | --- | --- | --- | --- | --- | --- | --- |
| 1 | 1 | **Planning** | 18d | 2024-08-01 | 2024-08-29 |  |  |  |  |  | 160h | 7,260.4 |
| 2 | 1.1 | Define Project Scope | 3d | 2024-08-01 | 2024-08-06 |  | 0d |  |  | Project Manager | 24h | 1,107.6 |
| 3 | 1.2 | Develop Project Plan | 4d | 2024-08-07 | 2024-08-13 | 2 | 0d |  |  | Project Manager | 32h | 1,476.8 |
| 4 | 1.3 | Estimate Project Costs | 3d | 2024-08-14 | 2024-08-16 | 3 | 0d |  |  | Project Manager | 24h | 1,107.6 |
| 5 | 1.4 | Conduct Initial Site Assessment | 3d | 2024-08-19 | 2024-08-21 | 4 | 0d |  |  | Civil Engineer | 24h | 984 |
| 6 | 1.5 | Conduct Stakeholder Meeting | 2d | 2024-08-19 | 2024-08-20 | 2, 4 | 1d |  |  | Project Manager | 16h | 738.4 |
| 7 | 1.6 | Obtain Necessary Permits | 5d | 2024-08-22 | 2024-08-29 | 6, 5 | 0d |  |  | Project Manager | 40h | 1,846 |
| 8 | 2 | **Design Phase** | 15d | 2024-08-30 | 2024-09-25 |  | 0d |  |  |  | 156h | 6,387.6 |
| 9 | 2.1 | Create detailed floor plan | 4d | 2024-08-30 | 2024-09-09 | 7 | 0d |  |  | Civil Engineer | 32h | 1,312 |
| 10 | 2.2 | Design parking space layout | 3d | 2024-09-10 | 2024-09-12 | 9 | 0d |  |  | Civil Engineer | 24h | 984 |
| 11 | 2.3 | Plan for electric car chargers | 3d | 2024-09-13 | 2024-09-17 | 10 | 0d |  |  | Electrical Engineer [50%] | 12h | 504 |
| 12 | 2.4 | Design automated check-in/check-out system | 4d | 2024-09-13 | 2024-09-18 | 10 | 57d |  |  | IT Specialist | 32h | 1,152 |
| 13 | 2.5 | Plan CCTV camera placements | 4d | 2024-09-13 | 2024-09-18 | 10 | 57d |  |  | Electrical Engineer [50%] | 16h | 672 |
| 14 | 2.6 | Develop signage and markings plan | 2d | 2024-09-18 | 2024-09-19 | 11 | 0d |  |  | Civil Engineer | 16h | 656 |
| 15 | 2.7 | Design Review & Revisions | 3d | 2024-09-23 | 2024-09-25 | 14 | 0d |  |  | Project Manager | 24h | 1,107.6 |
| 16 | 3 | **Procurement Phase** | 11d | 2024-09-26 | 2024-10-15 |  | 0d |  |  |  | 124h | 5,444 |
| 17 | 3.1 | Identify and select vendors | 4d | 2024-09-26 | 2024-10-02 | 15 | 0d |  |  | Project Manager | 32h | 1,476.8 |
| 18 | 3.2 | Procure materials for asphalt and markings | 4d | 2024-10-03 | 2024-10-09 | 17 | 0d |  |  | Project Manager [50%] | 16h | 738.4 |
| 19 | 3.3 | Procure electric car chargers | 4d | 2024-10-03 | 2024-10-09 | 17 | 0d |  |  | Electrical Engineer [50%] | 16h | 672 |
| 20 | 3.4 | Procure automated check-in/check-out system | 2d | 2024-10-03 | 2024-10-07 | 17 | 2d |  |  | IT Specialist | 16h | 576 |
| 21 | 3.5 | Procure CCTV cameras | 3d | 2024-10-03 | 2024-10-08 | 17 | 1d |  |  | Electrical Engineer [50%] | 12h | 504 |
| 22 | 3.6 | Order signage and markings | 2d | 2024-10-03 | 2024-10-07 | 17 | 2d |  |  | Project Manager [50%] | 8h | 369.2 |
| 23 | 3.7 | Arrange for delivery of materials | 3d | 2024-10-10 | 2024-10-15 | 18, 19, 20, 21, 22 | 0d |  |  | Project Manager | 24h | 1,107.6 |
| 24 | 4 | **Site Preparation** | 34d | 2024-08-30 | 2024-10-28 |  | 0d |  |  |  | 100h | 7,848 |
| 25 | 4.1 | Clear and level the site | 5d | 2024-08-30 | 2024-09-10 | 7 | 21d | 0d |  | Construction Workers [50%]; Heavy Machinery [50%] | 20h | 3,000 |
| 26 | 4.2 | Remove old asphalt if necessary | 4d | 2024-09-04 | 2024-09-10 | 25SS+1d | 21d |  | 2024-10-27 | Construction Workers [50%]; Heavy Machinery [50%] | 16h | 2,900 |
| 27 | 4.3 | Install drainage systems | 3d | 2024-10-16 | 2024-10-21 | 26, 23 | 0d |  |  | Construction Workers | 24h | 600 |
| 28 | 4.4 | Prepare electrical infrastructure for chargers and cameras | 3d | 2024-10-22 | 2024-10-24 | 27 | 0d |  |  | Electrician | 24h | 768 |
| 29 | 4.5 | Set up temporary barriers and safety signs | 2d | 2024-10-25 | 2024-10-28 | 28 | 0d |  |  | Safety Signs [600%]; Construction Workers | 16h | 580 |

Notes:
- 26: Removal of old asphalt can start one day after the clearling and leveling of the site begins

| ID | WBS | Task | Type | Duration | Start | Finish | Predecessors | Total slack | Free slack | Resources | Work | Cost |
| --- | --- | --- | --- | --- | --- | --- | --- | --- | --- | --- | --- | --- |
| 30 | 5 | **Construction Phase** |  | 19d | 2024-10-25 | 2024-11-25 |  | 0d |  |  | 132h | 232,088 |
| 31 | 5.1 | Lay new asphalt |  | 4d | 2024-10-29 | 2024-11-04 | 29 | 26d | 0d | Asphalt [40000%]; Construction Workers; Concrete [155200%] | 32h | 105,032 |
| 32 | 5.2 | Mark parking spaces |  | 2d | 2024-11-07 | 2024-11-08 | 31FS+2d | 26d |  | Construction Workers [50%] | 8h | 200 |
| 33 | 5.3 | Install electric car chargers |  | 4d | 2024-10-25 | 2024-10-30 | 29SS | 32d | 0d | Electric Car Chargers [1500%]; Electrician [50%] | 16h | 85,502 |
| 34 | 5.4 | Install automated check-in/check-out system |  | 5d | 2024-10-25 | 2024-10-31 | 29SS | 0d |  | Automatic Check-in/Check-out System; IT Specialist [50%] | 20h | 35,720 |
| 35 | 5.5 | Install CCTV cameras |  | 4d | 2024-11-04 | 2024-11-07 | 34 | 0d |  | CCTV Cameras [1800%]; Electrician [50%] | 16h | 4,112 |
| 36 | 5.6 | <New Milestone> | milestone | 0d | 2024-11-07 | 2024-11-07 | 35 | 27d |  |  |  |  |
| 37 | 5.7 | Install signage and markings |  | 4d | 2024-11-08 | 2024-11-14 | 35 | 0d |  | Signage and Markings [1500%]; Construction Workers [50%] | 16h | 850 |
| 38 | 5.8 | Conduct quality checks |  | 6d | 2024-11-18 | 2024-11-25 | 37 | 17d |  | Quality Control Inspector [50%] | 24h | 672 |
| 39 | 6 | **Testing & Final Inspection** |  | 21d | 2024-10-25 | 2024-11-27 |  | 13d |  |  | 72h | 2,594.4 |
| 40 | 6.1 | Test electric car chargers |  | 1d | 2024-10-25 | 2024-10-25 | 33SS | 35d |  | Electrical Engineer | 8h | 336 |
| 41 | 6.2 | Test automated check-in/check-out system |  | 2d | 2024-10-25 | 2024-10-28 | 34SS | 34d |  | IT Specialist [50%] | 8h | 288 |
| 42 | 6.3 | Test CCTV cameras |  | 1d | 2024-11-08 | 2024-11-08 | 35 | 26d |  | Electrical Engineer | 8h | 336 |
| 43 | 6.4 | Verify signage and markings |  | 2d | 2024-11-18 | 2024-11-19 | 37 | 0d |  | Quality Control Inspector [50%] | 8h | 224 |
| 44 | 6.5 | Conduct final site inspection |  | 2d | 2024-11-20 | 2024-11-21 | 43 | 0d |  | Quality Control Inspector [50%] | 8h | 224 |
| 45 | 6.6 | Address any issues identified during testing |  | 4d | 2024-11-22 | 2024-11-27 | 44 | 0d |  | Project Manager; Quality Control Inspector [50%] | 32h | 1,186.4 |
| 46 | 7 | **Project closure** |  | 15d | 2024-11-28 | 2024-12-20 |  | 0d |  |  | 96h | 4,430.4 |
| 47 | 7.1 | Conduct Final Project Review |  | 2d | 2024-11-28 | 2024-12-02 | 45 | 0d |  | Project Manager | 16h | 738.4 |
| 48 | 7.2 | Prepare Project Documentation |  | 3d | 2024-12-03 | 2024-12-05 | 47 | 0d |  | Project Manager [50%] | 12h | 553.8 |
| 49 | 7.3 | Train staff on new systems |  | 2d | 2024-12-06 | 2024-12-09 | 48 | 8d |  | Project Manager [25%] | 4h | 184.6 |
| 50 | 7.4 | Handover Documentation and Keys |  | 4d | 2024-12-06 | 2024-12-11 | 48 | 0d |  | Project Manager [25%] | 8h | 369.2 |
| 51 | 7.5 | Finalize Financial Accounts |  | 4d | 2024-12-03 | 2024-12-06 | 47 | 1d | 0d | Project Manager [50%] | 16h | 738.4 |
| 52 | 7.6 | Archive Project Files |  | 4d | 2024-12-12 | 2024-12-18 | 50, 51 | 0d |  | Project Manager [25%] | 8h | 369.2 |
| 53 | 7.7 | Conduct Lessons Learned Session |  | 8d | 2024-12-09 | 2024-12-19 | 51 | 1d |  | Project Manager [25%] | 16h | 738.4 |
| 54 | 7.8 | Close Contracts and Payments |  | 2d | 2024-12-12 | 2024-12-16 | 50 | 4d |  | Project Manager [50%] | 8h | 369.2 |
| 55 | 7.9 | Obtain Client Sign-Off |  | 2d | 2024-12-19 | 2024-12-20 | 52 | 0d |  | Project Manager [50%] | 8h | 369.2 |

Notes:
- 32: Installation of chargers can begin as soon as the new asphalt is laid without waiting for the entire asphalt laying process to finish
